# 一期一阶段

Schedule from MS Project, 2014-06-10 to 2014-06-30, A marks actual dates.
Microsoft

## Calendars

- 标准: Mon-Fri 08:00-12:00, 13:00-17:00; Sat-Sun off.

## Resources

| Resource |
| --- |
| 张海龙 |
| 程浩 |
| 岳小可 |
| 刘宁 |
| 齐晶 |

## Schedule

| ID | Task | Duration | Start | Finish | Predecessors | Complete | Remaining | Total slack | Free slack | Constraint | Resources | Work | Actual work |
| --- | --- | --- | --- | --- | --- | --- | --- | --- | --- | --- | --- | --- | --- |
| 1 | 微信-微信关注事件 | 1d | 2014-06-11 A | 2014-06-11 A |  | 100% |  |  |  | start no earlier than 2014-06-11 | 张海龙 | 8h | 8h |
| 2 | 微信-自定义菜单 | 1d | 2014-06-12 A | 2014-06-12 A | 1 | 100% |  |  |  |  | 张海龙 | 8h | 8h |
| 3 | 微信-问答-问答菜单 | 2d | 2014-06-13 A | 2014-06-16 A | 2 | 100% |  |  |  |  | 张海龙 | 16h | 16h |
| 4 | 微信商城-首页 | 2d | 2014-06-17 A | 2014-06-18 A | 3 | 100% |  |  |  |  | 张海龙 | 16h | 16h |
| 5 | 微信商城-商品列表框架 | 2d | 2014-06-11 A | 2014-06-12 A |  | 100% |  |  |  | start no earlier than 2014-06-11 | 程浩 | 16h | 16h |
| 6 | 微信商城-商品列表 | 2d | 2014-06-13 A | 2014-06-16 A | 5 | 100% |  |  |  |  | 程浩 | 16h | 16h |
| 7 | 微信商城-商品详细 | 1d | 2014-06-17 A | 2014-06-17 A | 6 | 100% |  |  |  |  | 程浩 | 8h | 8h |
| 8 | 微信商城-购物车 | 2d | 2014-06-18 A | 2014-06-19 | 7 | 50% | 1d | 7d |  |  | 程浩 | 16h | 8h |
| 9 | 微信商城-支付页面 | 3d | 2014-06-19 | 2014-06-23 | 4 |  |  | 5d |  |  | 张海龙 | 24h |  |
| 10 | 微信商城-会员中心 | 2d | 2014-06-11 A | 2014-06-12 A |  | 100% |  |  |  | start no earlier than 2014-06-11 | 岳小可 | 16h | 16h |
| 11 | 微信商城-订单列表 | 2d | 2014-06-13 A | 2014-06-16 A | 10 | 100% |  |  |  |  | 岳小可 | 16h | 16h |
| 12 | 微信商城-订单详情 | 2d | 2014-06-17 A | 2014-06-18 A | 11 | 100% |  |  |  |  | 岳小可 | 16h | 16h |
| 13 | 微信商城-收货地址列表 | 2d | 2014-06-11 A | 2014-06-12 A |  | 100% |  |  |  | start no earlier than 2014-06-11 | 刘宁 | 16h | 16h |
| 14 | 微信商城-新建/修改收货地址 | 2d | 2014-06-13 A | 2014-06-16 A | 13 | 100% |  |  |  |  | 刘宁 | 16h | 16h |
| 15 | 微信商城-个人信息管理 | 1d | 2014-06-17 A | 2014-06-17 A | 14 | 100% |  |  |  |  | 刘宁 | 8h | 8h |
| 16 | 微信商城-亿家卡列表 | 2d | 2014-06-11 A | 2014-06-12 A |  | 100% |  |  |  | start no earlier than 2014-06-11 | 齐晶 | 16h | 16h |
| 17 | 微信商城-绑定亿家卡 | 2d | 2014-06-13 | 2014-06-16 | 16 |  |  | 10d |  |  | 齐晶 | 16h |  |
| 18 | 微信商城-搜索页 | 2d | 2014-06-17 A | 2014-06-18 A | 17 | 100% |  |  |  |  | 齐晶 | 16h | 16h |
| 19 | 微信商城-首页-UI | 2d | 2014-06-24 A | 2014-06-25 A | 9 | 100% |  |  |  |  | 张海龙 | 16h | 16h |
| 20 | 微信商城-商品列表框架-UI | 1d | 2014-06-20 A | 2014-06-20 A | 8 | 100% |  |  |  |  | 程浩 | 8h | 8h |
| 21 | 微信商城-商品列表-UI | 1d | 2014-06-23 | 2014-06-23 | 20 |  |  | 1d | 0d |  | 程浩 | 8h |  |
| 22 | 微信商城-商品详细-UI | 2d | 2014-06-24 | 2014-06-25 | 21 |  |  | 1d | 0d |  | 程浩 | 16h |  |
| 23 | 微信商城-购物车-UI | 2d | 2014-06-26 | 2014-06-27 | 22 |  |  | 1d |  |  | 程浩 | 16h |  |
| 24 | 微信商城-支付页面-UI | 2d | 2014-06-26 | 2014-06-27 | 19 |  |  | 1d |  |  | 张海龙 | 16h |  |
| 25 | 微信商城-会员中心-UI | 2d | 2014-06-19 | 2014-06-20 | 12 |  |  | 2d | 0d |  | 岳小可 | 16h |  |
| 26 | 微信商城-订单列表-UI | 2d | 2014-06-23 | 2014-06-24 | 25 |  |  | 2d | 0d |  | 岳小可 | 16h |  |
| 27 | 微信商城-订单详情-UI | 2d | 2014-06-25 | 2014-06-26 | 26 |  |  | 2d |  |  | 岳小可 | 16h |  |
| 28 | 微信商城-收货地址列表-UI | 2d | 2014-06-18 A | 2014-06-19 | 15 | 50% | 1d | 4d | 0d |  | 刘宁 | 16h | 8h |
| 29 | 微信商城-新建/修改收货地址-UI | 2d | 2014-06-20 A | 2014-06-23 | 28 | 50% | 1d | 3d | 0d |  | 刘宁 | 16h | 8h |
| 30 | 微信商城-个人信息管理-UI | 2d | 2014-06-24 | 2014-06-25 | 29 |  |  | 3d |  |  | 刘宁 | 16h |  |
| 31 | 微信商城-亿家卡列表-UI | 2d | 2014-06-19 | 2014-06-20 | 18 |  |  | 2d | 0d |  | 齐晶 | 16h |  |
| 32 | 微信商城-绑定亿家卡-UI | 2d | 2014-06-23 | 2014-06-24 | 31 |  |  | 2d | 0d |  | 齐晶 | 16h |  |
| 33 | 微信商城-搜索页-UI | 2d | 2014-06-25 | 2014-06-26 | 32 |  |  | 2d |  |  | 齐晶 | 16h |  |
| 34 | 单元测试 | 13d | 2014-06-10 A | 2014-06-26 |  | 69% | 4d | 0d |  | finish no earlier than 2014-06-26 | 程浩; 刘宁; 齐晶; 岳小可; 张海龙 | 520h | 360h |
| 35 | 集成测试 | 2d | 2014-06-27 | 2014-06-30 | 34 |  |  | 0d |  | start no earlier than 2014-06-27 | 程浩; 刘宁; 齐晶; 岳小可; 张海龙 | 80h |  |

Notes:
- 1: 需要显示内容
